# 37529-IOH

Schedule from ProjectLibre, 2025-11-05 to 2025-11-24.

## Calendars

- Standard: Mon-Sat 08:00-12:00, 13:00-17:00; Sun off.

## Resources

| Resource |
| --- |
| Unassigned |
| CC-B1 |

## Schedule

| ID | WBS | Task | Duration | Start | Finish | Predecessors | Baseline start | Baseline finish |
| --- | --- | --- | --- | --- | --- | --- | --- | --- |
| 1 | 1 | **37529-IOH** | 17d | 2025-11-05 | 2025-11-24 |  | 2025-11-05 | 2025-11-24 |
| 2 | 1.1 | **Initial Preparation** | 2d | 2025-11-05 | 2025-11-06 |  | 2025-11-05 | 2025-11-06 |
| 3 | 1.1.1 | Loco washing and Compressor removal | 1d | 2025-11-05 | 2025-11-05 |  | 2025-11-05 | 2025-11-05 |
| 4 | 1.1.2 | Hood removal | 1d | 2025-11-06 | 2025-11-06 | 3 | 2025-11-06 | 2025-11-06 |
| 5 | 1.2 | **Unloading of CC and EC Components** | 4d | 2025-11-06 | 2025-11-10 |  | 2025-11-06 | 2025-11-10 |
| 6 | 1.2.1 | Unloading of Cab and Panel components | 1d | 2025-11-06 | 2025-11-06 | 3 | 2025-11-06 | 2025-11-06 |
| 7 | 1.2.2 | Unloading of VCB and SR/BUR/HF Contactors | 1d | 2025-11-07 | 2025-11-07 | 6 | 2025-11-07 | 2025-11-07 |
| 8 | 1.2.3 | BUR unloading | 1d | 2025-11-08 | 2025-11-08 | 4, 7 | 2025-11-08 | 2025-11-08 |
| 9 | 1.2.4 | HLC unloading | 1d | 2025-11-10 | 2025-11-10 | 4, 8 | 2025-11-10 | 2025-11-10 |
| 10 | 1.3 | **SR unloading** | 3d | 2025-11-06 | 2025-11-08 |  | 2025-11-06 | 2025-11-08 |
| 11 | 1.3.1 | SR Coolant draining and pipeline disconnection | 1d | 2025-11-06 | 2025-11-06 | 3 | 2025-11-06 | 2025-11-06 |
| 12 | 1.3.2 | Transformer Oil draining and pipeline disconnection | 1d | 2025-11-07 | 2025-11-07 | 11 | 2025-11-07 | 2025-11-07 |
| 13 | 1.3.3 | SR unloading - TM and SR sub-d disconnection | 1d | 2025-11-08 | 2025-11-08 | 4, 12 | 2025-11-08 | 2025-11-08 |
| 14 | 1.4 | **CC Schedule & loading** | 8d | 2025-11-12 | 2025-11-20 |  | 2025-11-12 | 2025-11-20 |
| 15 | 1.4.1 | BUR & HLC Sch. BUR Contactor loading | 1d | 2025-11-12 | 2025-11-12 | 9, 23 | 2025-11-12 | 2025-11-12 |
| 16 | 1.4.2 | SR Sch. SR Contactor loading | 1d | 2025-11-13 | 2025-11-13 | 15 | 2025-11-13 | 2025-11-13 |
| 17 | 1.4.3 | BUR & HLC loading | 1d | 2025-11-14 | 2025-11-14 | 16 | 2025-11-14 | 2025-11-14 |
| 18 | 1.4.4 | SR loading. TM/SR Sub-d connections | 1d | 2025-11-17 | 2025-11-17 | 17, 27 | 2025-11-17 | 2025-11-17 |
| 19 | 1.4.5 | Cab/Panel components loading | 1d | 2025-11-18 | 2025-11-18 | 18 | 2025-11-18 | 2025-11-18 |
| 20 | 1.4.6 | Cab, roof, panels sch. | 1d | 2025-11-19 | 2025-11-19 | 19 | 2025-11-19 | 2025-11-19 |
| 21 | 1.4.7 | Couplers checking and software updation | 1d | 2025-11-20 | 2025-11-20 | 20 | 2025-11-20 | 2025-11-20 |
| 22 | 1.5 | **EC overhauling** | 3d | 2025-11-08 | 2025-11-11 |  | 2025-11-08 | 2025-11-11 |
| 23 | 1.5.1 | Overhauling of VCB, Contactors and Relays | 3d | 2025-11-08 | 2025-11-11 | 7 | 2025-11-08 | 2025-11-11 |
| 24 | 1.6 | **Transformer attention** | 6d | 2025-11-10 | 2025-11-15 |  | 2025-11-10 | 2025-11-15 |
| 25 | 1.6.1 | Transformer bushing gasket attention | 3d | 2025-11-10 | 2025-11-12 | 13 | 2025-11-10 | 2025-11-12 |
| 26 | 1.6.2 | Transformer Oil pump changing | 1d | 2025-11-13 | 2025-11-13 | 25 | 2025-11-13 | 2025-11-13 |
| 27 | 1.6.3 | Tranformer Oil filtration and leakage attention | 2d | 2025-11-14 | 2025-11-15 | 26 | 2025-11-14 | 2025-11-15 |

| ID | WBS | Task | Duration | Start | Finish | Predecessors | Baseline start | Baseline finish |
| --- | --- | --- | --- | --- | --- | --- | --- | --- |
| 28 | 1.7 | **Transformer Reconnections** | 2d | 2025-11-18 | 2025-11-19 |  | 2025-11-18 | 2025-11-19 |
| 29 | 1.7.1 | Transformer Oil pipeline connections | 1d | 2025-11-18 | 2025-11-18 | 18 | 2025-11-18 | 2025-11-18 |
| 30 | 1.7.2 | Transformer electrical connections | 1d | 2025-11-19 | 2025-11-19 | 29 | 2025-11-19 | 2025-11-19 |
| 31 | 1.8 | **TM Work** | 9d | 2025-11-06 | 2025-11-15 |  | 2025-11-06 | 2025-11-15 |
| 32 | 1.8.1 | TM disconnections | 1d | 2025-11-06 | 2025-11-06 | 3 | 2025-11-06 | 2025-11-06 |
| 33 | 1.8.2 | Car body attention & Bellow changing | 1d | 2025-11-07 | 2025-11-07 | 37 | 2025-11-07 | 2025-11-07 |
| 34 | 1.8.3 | TM sch. post Truck assembling | 2d | 2025-11-12 | 2025-11-13 | 40 | 2025-11-12 | 2025-11-13 |
| 35 | 1.8.4 | TM connections post Truck In | 1d | 2025-11-15 | 2025-11-15 | 42 | 2025-11-15 | 2025-11-15 |
| 36 | 1.9 | **UT work** | 10d | 2025-11-05 | 2025-11-15 |  | 2025-11-05 | 2025-11-15 |
| 37 | 1.9.1 | Truck removal & Dummy truck / Trustle placement | 1d | 2025-11-06 | 2025-11-06 | 3 | 2025-11-06 | 2025-11-06 |
| 38 | 1.9.2 | TM assembling | 3d | 2025-11-05 | 2025-11-07 |  | 2025-11-05 | 2025-11-07 |
| 39 | 1.9.3 | TM Trial run | 1d | 2025-11-08 | 2025-11-08 | 38 | 2025-11-08 | 2025-11-08 |
| 40 | 1.9.4 | Truck assembling | 2d | 2025-11-10 | 2025-11-11 | 39 | 2025-11-10 | 2025-11-11 |
| 41 | 1.9.5 | Brake blocks and dampers fitment | 1d | 2025-11-12 | 2025-11-12 | 40 | 2025-11-12 | 2025-11-12 |
| 42 | 1.9.6 | Truck In Connections | 1d | 2025-11-14 | 2025-11-14 | 34, 41 | 2025-11-14 | 2025-11-14 |
| 43 | 1.9.7 | UT Schedule (Clearance checking) | 1d | 2025-11-15 | 2025-11-15 | 42 | 2025-11-15 | 2025-11-15 |
| 44 | 1.10 | **Final Testing and Releasing** | 3d | 2025-11-21 | 2025-11-24 |  | 2025-11-21 | 2025-11-24 |
| 45 | 1.10.1 | Energization | 1d | 2025-11-21 | 2025-11-21 | 21, 30, 35, 43 | 2025-11-21 | 2025-11-21 |
| 46 | 1.10.2 | FRC | 1d | 2025-11-22 | 2025-11-22 | 45 | 2025-11-22 | 2025-11-22 |
| 47 | 1.10.3 | Releasing | 1d | 2025-11-24 | 2025-11-24 | 46 | 2025-11-24 | 2025-11-24 |
